# iPad10.9Development

Schedule from MS Project, 2023-08-01 to 2024-03-27, costs in $.

## Calendars

- Standard: Mon-Fri 08:00-12:00, 13:00-17:00; Sat-Sun off.

## Resources

| Resource | Rate | Notes |
| --- | --- | --- |
| James (Muir) Project Manager | 60 | James Muir is the internal Project Manager at Apple Responsible for managing the project. |
| Tamsyn Corey (Lead Designer) | 72.12 |  |
| Hardware Development Team | 50.48 |  |
| Software Developer Team | 57.69 |  |
| Manufacturing Engineer Team | 43.27 |  |
| Quality Assurance Team | 30 |  |
| Shipping and Acquisition Fees |  |  |
| Meeting and Catering Costs |  |  |
| Manufacturing and Production Fees |  |  |

## Schedule

| ID | WBS | Task | Type | Duration | Start | Finish | Predecessors | Total slack | Resources | Work | Cost |
| --- | --- | --- | --- | --- | --- | --- | --- | --- | --- | --- | --- |
| 1 | 1 | **Design iPad 10.9 by Eric Hanoun and Kyle Galway** |  | 172d | 2023-08-01 | 2024-03-27 |  | 0d |  | 4046.11h | 275,870.45 |
| 2 | 1.1 | **Initiation Phase** |  | 5d | 2023-08-01 | 2023-08-07 |  | 0d |  | 48h | 3,976.92 |
| 3 | 1.1.1 | Identify Stakeholders |  | 1d | 2023-08-01 | 2023-08-01 |  | 0d | James (Muir) Project Manager | 8h | 480 |
| 4 | 1.1.2 | Develop Project charter |  | 3d | 2023-08-02 | 2023-08-04 | 3 | 0d | James (Muir) Project Manager | 24h | 1,440 |
| 5 | 1.1.3 | Hold Kick-off Meeting |  | 1d | 2023-08-07 | 2023-08-07 | 4 | 0d | Tamsyn Corey (Lead Designer); James (Muir) Project Manager; Meeting and Catering Costs [0.1%] | 16h | 2,056.92 |
| 6 | 1.1.4 | Initiation Phase Complete Milestone | milestone | 0d | 2023-08-07 | 2023-08-07 | 5 | 0d |  |  |  |
| 7 | 1.2 | **Planning Phase** |  | 36d | 2023-08-08 | 2023-09-26 | 2 | 0d |  | 288h | 17,280 |
| 8 | 1.2.1 | Develop Project Management Plan |  | 1w | 2023-08-08 | 2023-08-14 | 4 | 0d | James (Muir) Project Manager | 40h | 2,400 |
| 9 | 1.2.2 | **Complete Scope Management Planning** |  | 6d | 2023-08-15 | 2023-08-22 | 8 | 0d |  | 48h | 2,880 |
| 10 | 1.2.2.1 | Plan Scope Management |  | 2d | 2023-08-15 | 2023-08-16 |  | 0d | James (Muir) Project Manager | 16h | 960 |
| 11 | 1.2.2.2 | Collect Requirements |  | 1d | 2023-08-17 | 2023-08-17 | 10 | 0d | James (Muir) Project Manager | 8h | 480 |
| 12 | 1.2.2.3 | Define Project Scope |  | 1d | 2023-08-18 | 2023-08-18 | 11 | 0d | James (Muir) Project Manager | 8h | 480 |
| 13 | 1.2.2.4 | Create Work Breakdown Structure |  | 2d | 2023-08-21 | 2023-08-22 | 12 | 0d | James (Muir) Project Manager | 16h | 960 |
| 14 | 1.2.3 | **Complete Schedule Management Planning** |  | 7d | 2023-08-23 | 2023-08-31 | 9 | 0d |  | 56h | 3,360 |
| 15 | 1.2.3.1 | Plan Schedule Management |  | 2d | 2023-08-23 | 2023-08-24 |  | 0d | James (Muir) Project Manager | 16h | 960 |
| 16 | 1.2.3.2 | Define Activites |  | 1d | 2023-08-25 | 2023-08-25 | 15 | 0d | James (Muir) Project Manager | 8h | 480 |
| 17 | 1.2.3.3 | Sequence Activities |  | 1d | 2023-08-28 | 2023-08-28 | 16 | 0d | James (Muir) Project Manager | 8h | 480 |
| 18 | 1.2.3.4 | Estimate Activity Durations |  | 1d | 2023-08-29 | 2023-08-29 | 17 | 0d | James (Muir) Project Manager | 8h | 480 |
| 19 | 1.2.3.5 | Develop Schedule |  | 2d | 2023-08-30 | 2023-08-31 | 18 | 0d | James (Muir) Project Manager | 16h | 960 |
| 20 | 1.2.4 | **Complete Cost Management Planning** |  | 5d | 2023-09-01 | 2023-09-07 | 14 | 0d |  | 40h | 2,400 |
| 21 | 1.2.4.1 | Plan Cost Management |  | 2d | 2023-09-01 | 2023-09-04 |  | 0d | James (Muir) Project Manager | 16h | 960 |
| 22 | 1.2.4.2 | Estimate Costs |  | 1d | 2023-09-05 | 2023-09-05 | 21 | 0d | James (Muir) Project Manager | 8h | 480 |
| 23 | 1.2.4.3 | Determine Project Budget |  | 2d | 2023-09-06 | 2023-09-07 | 22 | 0d | James (Muir) Project Manager | 16h | 960 |
| 24 | 1.2.5 | Plan Stakeholder Engagement |  | 2d | 2023-09-08 | 2023-09-11 | 20, 3 | 0d | James (Muir) Project Manager | 16h | 960 |
| 25 | 1.2.6 | Plan Quality Management |  | 2d | 2023-09-12 | 2023-09-13 | 24 | 0d | James (Muir) Project Manager | 16h | 960 |

Notes:
- 1: Estimated duration: half of a year.
- 2: 9 days estimation
- 7: One month duration estimation

| ID | WBS | Task | Type | Duration | Start | Finish | Predecessors | Total slack | Free slack | Constraint | Resources | Work | Cost |
| --- | --- | --- | --- | --- | --- | --- | --- | --- | --- | --- | --- | --- | --- |
| 26 | 1.2.7 | **Complete Risk Management Planning** |  | 9d | 2023-09-14 | 2023-09-26 | 25 | 0d |  |  |  | 72h | 4,320 |
| 27 | 1.2.7.1 | Plan Risk Management |  | 2d | 2023-09-14 | 2023-09-15 |  | 0d |  |  | James (Muir) Project Manager | 16h | 960 |
| 28 | 1.2.7.2 | Identify Risks |  | 1d | 2023-09-18 | 2023-09-18 | 27 | 0d |  |  | James (Muir) Project Manager | 8h | 480 |
| 29 | 1.2.7.3 | Perform Qualitative Risk Analysis |  | 2d | 2023-09-19 | 2023-09-20 | 28 | 0d |  |  | James (Muir) Project Manager | 16h | 960 |
| 30 | 1.2.7.4 | Perform Quantitative Risk Analysis |  | 2d | 2023-09-21 | 2023-09-22 | 29 | 0d |  |  | James (Muir) Project Manager | 16h | 960 |
| 31 | 1.2.7.5 | Plan Risk Responses |  | 2d | 2023-09-25 | 2023-09-26 | 30 | 0d |  |  | James (Muir) Project Manager | 16h | 960 |
| 32 | 1.2.8 | Planning Phase Complete Milestone | milestone | 0d | 2023-09-26 | 2023-09-26 | 9, 26 | 0d |  |  |  |  |  |
| 33 | 1.3 | **Executing Phase** |  | 126d | 2023-09-27 | 2024-03-20 | 7 | 0d |  |  |  | 3551.1h | 243,088.31 |
| 34 | 1.3.1 | **Project Integration Management** |  | 126d | 2023-09-27 | 2024-03-20 |  | 0d |  |  |  | 899.1h | 53,946 |
| 35 | 1.3.1.1 | Direct and Manage Project Work |  | 126d | 2023-09-27 | 2024-03-20 | 8 | 0d |  | start no earlier than 2023-08-28 | James (Muir) Project Manager [85%] | 849.15h | 50,949 |
| 36 | 1.3.1.2 | Manage Project Knowledge |  | 126d | 2023-09-27 | 2024-03-20 | 35SS | 0d |  | start no earlier than 2023-08-03 | James (Muir) Project Manager [5%] | 49.95h | 2,997 |
| 37 | 1.3.2 | **Create Proposal** |  | 4d | 2023-09-27 | 2023-10-02 |  | 0d |  |  |  | 28h | 2,019.23 |
| 38 | 1.3.2.1 | Conduct Market Research |  | 4d | 2023-09-27 | 2023-10-02 |  | 0d |  |  | Tamsyn Corey (Lead Designer) [50%] | 16h | 1,153.85 |
| 39 | 1.3.2.2 | Consult with Company Stakeholders |  | 2d | 2023-09-27 | 2023-09-28 |  | 2d |  |  | Tamsyn Corey (Lead Designer) [50%] | 4h | 288.46 |
| 40 | 1.3.2.3 | Develop Project Proposal |  | 2d | 2023-09-29 | 2023-10-02 | 39SF, 38FF | 0d |  |  | Tamsyn Corey (Lead Designer) [50%] | 8h | 576.92 |
| 41 | 1.3.2.4 | Approval Finalized Milestone | milestone | 0d | 2023-10-02 | 2023-10-02 | 40 | 0d |  |  |  |  |  |
| 42 | 1.3.3 | **Obtain Approval** |  | 4d | 2023-10-02 | 2023-10-06 | 37 | 0d |  |  |  | 96h | 6,076.92 |
| 43 | 1.3.3.1 | Discuss with Company Stakeholders | milestone | 0d | 2023-10-02 | 2023-10-02 |  | 0d |  |  | Tamsyn Corey (Lead Designer); Meeting and Catering Costs [0.1%] |  | 1,000 |
| 44 | 1.3.3.2 | Review by Manufacturing Engineer Team |  | 4d | 2023-10-03 | 2023-10-06 | 43 | 0d |  |  | Manufacturing Engineer Team | 32h | 1,384.62 |
| 45 | 1.3.3.3 | Review by Hardware Development Team |  | 4d | 2023-10-03 | 2023-10-06 | 43 | 0d |  |  | Software Developer Team | 32h | 1,846.15 |
| 46 | 1.3.3.4 | Review by Software Development Team |  | 4d | 2023-10-03 | 2023-10-06 | 43 | 0d |  |  | Software Developer Team | 32h | 1,846.15 |
| 47 | 1.3.3.5 | Project Approval Obtained Milestone | milestone | 0d | 2023-10-06 | 2023-10-06 | 44, 45, 46 | 0d |  |  |  |  |  |
| 48 | 1.3.4 | **Design the Tablet** |  | 95d | 2023-10-09 | 2024-02-16 | 42 | 0d |  |  |  | 2176h | 141,769.23 |
| 49 | 1.3.4.1 | Coordinate Design Teams |  | 95d | 2023-10-09 | 2024-02-16 | 42 | 23d | 0d |  | Tamsyn Corey (Lead Designer) | 760h | 54,807.69 |

Notes:
- 33: 115 days duration.
- 40: Develop the Project Proposal has both a Start-to-Finish relationship with its predecessors, Conduct Market Research and Consult with Company Stakeholders. The Project Proposal cannot finish before the Stakeholders have been consulted and some amount of research has been done.

| ID | WBS | Task | Duration | Start | Finish | Predecessors | Total slack | Resources | Work | Cost |
| --- | --- | --- | --- | --- | --- | --- | --- | --- | --- | --- |
| 50 | 1.3.4.2 | **Hardware Design** | 95d | 2023-10-09 | 2024-02-16 |  | 0d |  | 656h | 43,115.38 |
| 51 | 1.3.4.2.1 | **Design Liquid Retina Display** | 10d | 2023-10-09 | 2023-10-20 |  | 0d |  | 80h | 4,038.46 |
| 52 | 1.3.4.2.1.1 | Design Screen Blueprints | 5d | 2023-10-09 | 2023-10-13 |  | 0d | Hardware Development Team | 40h | 2,019.23 |
| 53 | 1.3.4.2.1.2 | Create Screen Prototype | 3d | 2023-10-16 | 2023-10-18 | 52 | 0d | Hardware Development Team | 24h | 1,211.54 |
| 54 | 1.3.4.2.1.3 | Test Screen Prototype | 2d | 2023-10-19 | 2023-10-20 | 53 | 0d | Hardware Development Team | 16h | 807.69 |
| 55 | 1.3.4.2.2 | **Design 12MP Ultra Wide Camera** | 12d | 2023-10-23 | 2023-11-07 | 51 | 0d |  | 96h | 4,846.15 |
| 56 | 1.3.4.2.2.1 | Design Camera Blueprints | 5d | 2023-10-23 | 2023-10-27 |  | 0d | Hardware Development Team | 40h | 2,019.23 |
| 57 | 1.3.4.2.2.2 | Create Camera Prototype | 2d | 2023-10-30 | 2023-10-31 | 56 | 0d | Hardware Development Team | 16h | 807.69 |
| 58 | 1.3.4.2.2.3 | Test Camera Prototype | 5d | 2023-11-01 | 2023-11-07 | 57 | 0d | Hardware Development Team | 40h | 2,019.23 |
| 59 | 1.3.4.2.3 | **Design Wifi 6 Adapter** | 12d | 2023-11-08 | 2023-11-23 | 55 | 0d |  | 96h | 4,846.15 |
| 60 | 1.3.4.2.3.1 | Design Wi-Fi 6 Adapter Blueprints | 5d | 2023-11-08 | 2023-11-14 |  | 0d | Hardware Development Team | 40h | 2,019.23 |
| 61 | 1.3.4.2.3.2 | Create Wi-Fi 6 Adapter Prototype | 2d | 2023-11-15 | 2023-11-16 | 60 | 0d | Hardware Development Team | 16h | 807.69 |
| 62 | 1.3.4.2.3.3 | Test Wi-Fi 6 Adapter Prototype | 5d | 2023-11-17 | 2023-11-23 | 61 | 0d | Hardware Development Team | 40h | 2,019.23 |
| 63 | 1.3.4.2.4 | **Design Touch ID Scanner** | 11d | 2023-11-24 | 2023-12-08 | 59 | 0d |  | 88h | 4,442.31 |
| 64 | 1.3.4.2.4.1 | Design Touch ID Scanner Blueprints | 5d | 2023-11-24 | 2023-11-30 |  | 0d | Hardware Development Team | 40h | 2,019.23 |
| 65 | 1.3.4.2.4.2 | Create Touch ID Scanner Prototype | 2d | 2023-12-01 | 2023-12-04 | 64 | 0d | Hardware Development Team | 16h | 807.69 |
| 66 | 1.3.4.2.4.3 | Test Touch ID Scanner Prototype | 4d | 2023-12-05 | 2023-12-08 | 65 | 0d | Hardware Development Team | 32h | 1,615.38 |
| 67 | 1.3.4.2.5 | **Design Apple Pencil** | 12d | 2023-12-11 | 2023-12-26 | 63 | 0d |  | 96h | 4,846.15 |
| 68 | 1.3.4.2.5.1 | Design Apple Pencil Blueprints | 5d | 2023-12-11 | 2023-12-15 |  | 0d | Hardware Development Team | 40h | 2,019.23 |
| 69 | 1.3.4.2.5.2 | Create Apple Pencil Prototyps | 2d | 2023-12-18 | 2023-12-19 | 68 | 0d | Hardware Development Team | 16h | 807.69 |
| 70 | 1.3.4.2.5.3 | Test Apple Pencil Prototype | 5d | 2023-12-20 | 2023-12-26 | 69 | 0d | Hardware Development Team | 40h | 2,019.23 |
| 71 | 1.3.4.2.6 | **Design Magic Keyboard Folio** | 12d | 2023-12-27 | 2024-01-11 | 67 | 0d |  | 96h | 4,846.15 |
| 72 | 1.3.4.2.6.1 | Design Magic Keyboard Folio and Trackboard Blueprints | 5d | 2023-12-27 | 2024-01-02 |  | 0d | Hardware Development Team | 40h | 2,019.23 |
| 73 | 1.3.4.2.6.2 | Create Magic Keyboard Folio and Trackpad Prototype | 2d | 2024-01-03 | 2024-01-04 | 72 | 0d | Hardware Development Team | 16h | 807.69 |
| 74 | 1.3.4.2.6.3 | Test Magic Keyboard Folio and Trackpad Prototype | 5d | 2024-01-05 | 2024-01-11 | 73 | 0d | Hardware Development Team | 40h | 2,019.23 |

| ID | WBS | Task | Type | Duration | Start | Finish | Predecessors | Total slack | Free slack | Constraint | Resources | Work | Cost |
| --- | --- | --- | --- | --- | --- | --- | --- | --- | --- | --- | --- | --- | --- |
| 75 | 1.3.4.2.7 | **Performance Benchmarking Design** |  | 26d | 2024-01-12 | 2024-02-16 | 71 | 0d |  |  |  | 104h | 15,250 |
| 76 | 1.3.4.2.7.1 | Obtain Tablet Hardware Components |  | 26d | 2024-01-12 | 2024-02-16 |  | 0d |  | start no earlier than 2023-11-17 | Hardware Development Team; Shipping and Acquisition Fees [0.1%] | 24h | 11,211.54 |
| 77 | 1.3.4.2.7.2 | Develop A14 Bionic Chip Processor Prototype |  | 5d | 2024-01-12 | 2024-01-18 |  | 16d | 0d |  | Hardware Development Team | 40h | 2,019.23 |
| 78 | 1.3.4.2.7.3 | Benchmark Processor Prototype |  | 5d | 2024-01-19 | 2024-01-25 | 77 | 16d |  |  | Hardware Development Team | 40h | 2,019.23 |
| 79 | 1.3.4.2.8 | Hardware Design Complete Milestone | milestone | 0d | 2024-02-16 | 2024-02-16 | 75 | 0d |  |  |  |  |  |
| 80 | 1.3.4.3 | **Software Design** |  | 95d | 2023-10-09 | 2024-02-16 |  | 0d |  |  |  | 760h | 43,846.15 |
| 81 | 1.3.4.3.1 | **Develop iPadOS** |  | 30d | 2023-10-09 | 2023-11-17 |  | 0d |  |  |  | 240h | 13,846.15 |
| 82 | 1.3.4.3.1.1 | Design UI/UX for Operating System GUI |  | 1w | 2023-10-09 | 2023-10-13 |  | 0d |  |  | Software Developer Team | 40h | 2,307.69 |
| 83 | 1.3.4.3.1.2 | Program OS |  | 1mo | 2023-10-16 | 2023-11-10 | 82 | 0d |  |  | Software Developer Team | 160h | 9,230.77 |
| 84 | 1.3.4.3.1.3 | Optimize OS Performance |  | 1w | 2023-11-13 | 2023-11-17 | 83 | 0d |  |  | Software Developer Team | 40h | 2,307.69 |
| 85 | 1.3.4.3.2 | **Design Canvas APP** |  | 20d | 2023-11-20 | 2023-12-15 | 81 | 0d |  |  |  | 160h | 9,230.77 |
| 86 | 1.3.4.3.2.1 | Design UI/UX for Canvas |  | 1w | 2023-11-20 | 2023-11-24 |  | 0d |  |  | Software Developer Team | 40h | 2,307.69 |
| 87 | 1.3.4.3.2.2 | Program Canvas App |  | 2w | 2023-11-27 | 2023-12-08 | 86 | 0d |  |  | Software Developer Team | 80h | 4,615.38 |
| 88 | 1.3.4.3.2.3 | Test Canvas App |  | 1w | 2023-12-11 | 2023-12-15 | 87 | 0d |  |  | Software Developer Team | 40h | 2,307.69 |
| 89 | 1.3.4.3.3 | **Design Augmented Reality Integration Software** |  | 30d | 2023-12-18 | 2024-01-26 | 85, 55 | 0d |  |  |  | 240h | 13,846.15 |
| 90 | 1.3.4.3.3.1 | Design AR Integration Software Architecture |  | 2w | 2023-12-18 | 2023-12-29 |  | 0d |  |  | Software Developer Team | 80h | 4,615.38 |
| 91 | 1.3.4.3.3.2 | Program AR Integration Software |  | 2w | 2024-01-01 | 2024-01-12 | 90 | 0d |  |  | Software Developer Team | 80h | 4,615.38 |
| 92 | 1.3.4.3.3.3 | Test AR Integration Software |  | 2w | 2024-01-15 | 2024-01-26 | 91 | 0d |  |  | Software Developer Team | 80h | 4,615.38 |
| 93 | 1.3.4.3.4 | **Design App Store Support** |  | 15d | 2024-01-29 | 2024-02-16 | 89 | 0d |  |  |  | 120h | 6,923.08 |
| 94 | 1.3.4.3.4.1 | Design App Store Container Architecture |  | 1w | 2024-01-29 | 2024-02-02 |  | 0d |  |  | Software Developer Team | 40h | 2,307.69 |
| 95 | 1.3.4.3.4.2 | Program App Store Container Application |  | 1w | 2024-02-05 | 2024-02-09 | 94 | 0d |  |  | Software Developer Team | 40h | 2,307.69 |
| 96 | 1.3.4.3.4.3 | Test Compatibility with App Store Web Application |  | 1w | 2024-02-12 | 2024-02-16 | 95 | 0d |  |  | Software Developer Team | 40h | 2,307.69 |
| 97 | 1.3.4.3.5 | Software Design Complete Milestone | milestone | 0d | 2024-02-16 | 2024-02-16 | 93 | 0d |  |  |  |  |  |
| 98 | 1.3.4.4 | Tablet Design Complete Milestone | milestone | 0d | 2024-02-16 | 2024-02-16 | 50, 80, 49FF | 23d |  |  |  |  |  |

Notes:
- 89: The AR Integration Software is the supporting architecture and API links needed for the tablet to support AR applications through the use of the 12MP Ultra Wide Front Camera. / Because this software is required to integrate with the Camera, it only be started once development on the camera has completed. This is required to ensure that the software developed is capable of supporting the camera which will be integrated into the tablet. If the work proceeds on the AR integration software, but the camera goes through a major rework, much of the software development may be rendered unusable or be required to be majorly refactored.
- 93: The iPad 10.9 willl use same Web Application as the previous iPad models. This means that instead of developing a Native iOS application, much of the development work can be recycled. / Nonetheless, the container for the App Store Web Application must be created in the iPad 10.9's native environment, and it must be tested to ensure that it is compatible with the app store.

| ID | WBS | Task | Type | Duration | Start | Finish | Predecessors | Total slack | Free slack | Resources | Work | Cost |
| --- | --- | --- | --- | --- | --- | --- | --- | --- | --- | --- | --- | --- |
| 99 | 1.3.5 | **Produce Tablet Prototypes** |  | 8d | 2024-02-19 | 2024-02-28 | 50, 80 | 0d |  |  | 112h | 32,076.92 |
| 100 | 1.3.5.1 | **Manufacture Prototype Tablets** |  | 8d | 2024-02-19 | 2024-02-28 |  | 0d |  |  | 112h | 32,076.92 |
| 101 | 1.3.5.1.1 | Meet with Manufacturing Team Lead |  | 1d | 2024-02-19 | 2024-02-19 |  | 0d |  | Tamsyn Corey (Lead Designer); Manufacturing Engineer Team | 16h | 923.08 |
| 102 | 1.3.5.1.2 | Manufacture Liquid Retina Display |  | 1w | 2024-02-19 | 2024-02-26 | 101 | 0d |  | Manufacturing Engineer Team [40%]; Manufacturing and Production Fees [0.1%] | 16h | 10,692.31 |
| 103 | 1.3.5.1.3 | Manufacture Magic Keyboard Folio and Trackpad |  | 1w | 2024-02-19 | 2024-02-26 | 101 | 0d |  | Manufacturing Engineer Team [30%]; Manufacturing and Production Fees [0.1%] | 12h | 3,519.23 |
| 104 | 1.3.5.1.4 | Manufacture Wi-fi 6 Adapter |  | 1w | 2024-02-19 | 2024-02-26 | 101 | 0d |  | Manufacturing Engineer Team [30%]; Manufacturing and Production Fees [0.1%] | 12h | 4,519.23 |
| 105 | 1.3.5.1.5 | Manufacture Touch ID Scanner |  | 1w | 2024-02-19 | 2024-02-26 | 101 | 0d |  | Manufacturing Engineer Team [30%]; Manufacturing and Production Fees [0.1%] | 12h | 8,519.23 |
| 106 | 1.3.5.1.6 | Manufacture Apple Pencil |  | 1w | 2024-02-19 | 2024-02-26 | 101 | 0d |  | Manufacturing Engineer Team [30%]; Manufacturing and Production Fees [0.1%] | 12h | 1,519.23 |
| 107 | 1.3.5.1.7 | Manufacture 12MP Ultra Wide Camera |  | 1w | 2024-02-20 | 2024-02-26 | 101 | 0d |  | Manufacturing Engineer Team [40%] | 16h | 692.31 |
| 108 | 1.3.5.1.8 | Parts Manufacturing Complete Milestone | milestone | 0d | 2024-02-26 | 2024-02-26 | 102, 103, 104, 105, 106, 107 | 0d |  |  |  |  |
| 109 | 1.3.5.1.9 | Assemble Tablets from Components |  | 2d | 2024-02-27 | 2024-02-28 | 108 | 0d |  | Manufacturing Engineer Team; Shipping and Acquisition Fees [0.1%] | 16h | 1,692.31 |
| 110 | 1.3.5.1.10 | Manufacturing Complete Milestone | milestone | 0d | 2024-02-28 | 2024-02-28 | 109 | 0d |  |  |  |  |
| 111 | 1.3.6 | **Obtain Prototype Quality Assurance Approval** |  | 15d | 2024-02-29 | 2024-03-20 | 100 | 0d |  |  | 240h | 7,200 |
| 112 | 1.3.6.1 | Obtain Hardware Performance Verification |  | 1w | 2024-02-29 | 2024-03-06 |  | 0d |  | Quality Assurance Team | 40h | 1,200 |
| 113 | 1.3.6.2 | Obtain Software Performance Verification |  | 1w | 2024-02-29 | 2024-03-06 |  | 0d |  | Quality Assurance Team | 40h | 1,200 |
| 114 | 1.3.6.3 | Obtain Regulatory Compliance Verification |  | 2w | 2024-03-07 | 2024-03-20 | 112, 113 | 0d |  | Quality Assurance Team | 80h | 2,400 |
| 115 | 1.3.6.4 | Obtain Test User Approval |  | 2w | 2024-03-07 | 2024-03-20 | 112, 113 | 0d |  | Quality Assurance Team | 80h | 2,400 |
| 116 | 1.3.6.5 | Quality Assurance Verification Obtained Milestone | milestone | 0d | 2024-03-20 | 2024-03-20 | 115 | 0d |  |  |  |  |
| 117 | 1.3.7 | Executing Phase Complete Milestone | milestone | 0d | 2024-03-20 | 2024-03-20 | 111, 35, 36 | 0d |  |  |  |  |
| 118 | 1.4 | **Monitoring and Controlling Phase** |  | 126d | 2023-09-27 | 2024-03-20 | 7 | 0d |  |  | 79.01h | 4,740.6 |
| 119 | 1.4.1 | Monitor and Control Project Work |  | 126d | 2023-09-27 | 2024-03-20 | 35FF, 36FF | 0d |  | James (Muir) Project Manager [2%] | 19.98h | 1,198.8 |
| 120 | 1.4.2 | Perform integrated Change Control |  | 126d | 2023-09-27 | 2024-03-20 | 119FF | 0d |  | James (Muir) Project Manager [1%] | 9.99h | 599.4 |
| 121 | 1.4.3 | Monitor Risks |  | 5d | 2023-09-27 | 2023-10-03 | 31, 37FF | 121d |  | James (Muir) Project Manager [1%] | 0.4h | 24 |
| 122 | 1.4.4 | Validate Scope |  | 4d | 2023-10-02 | 2023-10-06 | 13, 42FF | 118d | 4d | James (Muir) Project Manager [2%] | 0.64h | 38.4 |
| 123 | 1.4.5 | Control Scope |  | 8d | 2023-09-27 | 2023-10-06 | 122SF, 37FF | 118d |  | James (Muir) Project Manager [1%] | 0.64h | 38.4 |
| 124 | 1.4.6 | Control Schedule |  | 96d | 2023-10-06 | 2024-02-16 | 19, 48FF | 23d |  | James (Muir) Project Manager [2%] | 15.2h | 912 |
| 125 | 1.4.7 | Control Quality |  | 96d | 2023-10-06 | 2024-02-16 | 25, 48FF | 23d |  | James (Muir) Project Manager [1%] | 7.6h | 456 |
| 126 | 1.4.8 | Control Costs |  | 105d | 2023-10-09 | 2024-03-01 | 21, 48SS, 100FF | 13d |  | James (Muir) Project Manager [2%] | 16.64h | 998.4 |
| 127 | 1.4.9 | Monitor Stakeholder Engagement |  | 100d | 2023-10-02 | 2024-02-19 | 24, 42SS, 48FF | 22d |  | James (Muir) Project Manager [1%] | 7.92h | 475.2 |
| 128 | 1.4.10 | Monitoring and Controlling Phase Complete Milestone | milestone | 0d | 2024-03-20 | 2024-03-20 | 120 | 0d |  |  |  |  |

Notes:
- 118: 115 days duration.

| ID | WBS | Task | Type | Duration | Start | Finish | Predecessors | Total slack | Resources | Work | Cost |
| --- | --- | --- | --- | --- | --- | --- | --- | --- | --- | --- | --- |
| 129 | 1.5 | **Closing** |  | 5d | 2024-03-20 | 2024-03-27 | 33, 118 | 0d |  | 80h | 6,784.62 |
| 130 | 1.5.1 | Close Project or Phase |  | 1w | 2024-03-20 | 2024-03-27 | 120 | 0d | Tamsyn Corey (Lead Designer); James (Muir) Project Manager; Meeting and Catering Costs [0.1%] | 80h | 6,784.62 |
| 131 | 1.5.2 | Project Complete Milestone | milestone | 0d | 2024-03-27 | 2024-03-27 | 130 | 0d |  |  |  |

Notes:
- 129: 9 days duration.
